# Tiendas

Schedule from MS Project, 2006-05-08 to 2006-09-08, A marks actual dates.
***

## Calendars

- Standard: Mon-Fri 08:00-12:00, 13:00-17:00; Sat-Sun off.

## Schedule

| ID | WBS | Task | Type | Duration | Start | Finish | Predecessors | Complete | Remaining | Baseline start | Baseline finish | Baseline duration | Total slack | Free slack | Constraint |
| --- | --- | --- | --- | --- | --- | --- | --- | --- | --- | --- | --- | --- | --- | --- | --- |
| 1 | 1 | **Pedido de compra item artículo** |  | 2d? | 2006-05-09 A | 2006-05-10 A |  | 100% |  | 2006-05-09 | 2006-05-10 | 2d? |  |  |  |
| 2 | 1.1 | Crear el campo AlmacenID |  | 2d? | 2006-05-09 A | 2006-05-10 A |  | 100% |  | 2006-05-09 | 2006-05-10 | 2d? |  |  | start no earlier than 2006-05-09 |
| 3 | 2 | **MoviArticulos** |  | 1d? | 2006-05-11 A | 2006-05-11 A | 1 | 100% |  | 2006-05-11 | 2006-05-11 | 1d? |  |  |  |
| 4 | 2.1 | Asegurar que todos los movimientos de artículos se crear con el AlmacenID correctamente |  | 1d? | 2006-05-11 A | 2006-05-11 A |  | 100% |  | 2006-05-11 | 2006-05-11 | 1d? |  |  |  |
| 5 | 3 | **Parametros** |  | 1d? | 2006-05-09 A | 2006-05-09 A | 3 | 100% |  | 2006-05-09 | 2006-05-09 | 1d? |  |  |  |
| 6 | 3.1 | Crear nueva tabla de parametros | milestone | 0d? | 2006-05-09 A | 2006-05-09 A |  | 100% |  | 2006-05-09 | 2006-05-09 | 0d? |  |  |  |
| 7 | 3.2 | Crear clase persist y de negocio de la nueva tabla |  | 1d? | 2006-05-09 A | 2006-05-09 A | 6 | 100% |  | 2006-05-09 | 2006-05-09 | 1d? |  |  | start no earlier than 2006-05-09 |
| 8 | 3.3 | Incluir parametro almacen predeterminado |  | 1d? | 2006-05-09 A | 2006-05-09 A | 7 | 100% |  | 2006-05-09 | 2006-05-09 | 1d? |  |  | start no earlier than 2006-05-09 |
| 9 | 4 | **Centros de gestión** |  | 34d | 2006-05-10 A | 2006-06-26 | 5 | 97% | 1d | 2006-05-10 | 2006-05-15 | 4d | 53d | 0d |  |
| 10 | 4.1 | Crear clase persist CentroGestion |  | 31d | 2006-05-10 A | 2006-06-21 A |  | 100% |  | 2006-05-10 | 2006-05-10 | 1d |  |  |  |
| 11 | 4.2 | Crear objeto CentroGestión |  | 1d | 2006-06-22 A | 2006-06-22 A | 10 | 100% |  | 2006-05-11 | 2006-05-11 | 1d |  |  |  |
| 12 | 4.3 | Crear mantenimiento CentroGestion |  | 1d | 2006-06-23 | 2006-06-23 | 11 |  |  | 2006-05-12 | 2006-05-12 | 1d | 54d |  |  |
| 13 | 4.4 | Insertar los datos correspondientes a los centros de gestión de la central mas las tiendas |  | 1d | 2006-06-26 A | 2006-06-26 A | 12 | 100% |  | 2006-05-15 | 2006-05-15 | 1d |  |  |  |
| 14 | 5 | **Almacenes** |  | 4d | 2006-06-27 A | 2006-06-30 | 9 | 75% | 1d | 2006-05-16 | 2006-05-19 | 4d | 50d |  |  |
| 15 | 5.1 | Crear clase persist Almacenes |  | 1d | 2006-06-27 A | 2006-06-27 A |  | 100% |  | 2006-05-16 | 2006-05-16 | 1d |  |  |  |
| 16 | 5.2 | crear objeto Almacenes |  | 1d | 2006-06-28 A | 2006-06-28 A | 15 | 100% |  | 2006-05-17 | 2006-05-17 | 1d |  |  |  |
| 17 | 5.3 | Crear mantenimiento Almacenes |  | 1d | 2006-06-29 | 2006-06-29 | 16 |  |  | 2006-05-18 | 2006-05-18 | 1d | 51d |  |  |
| 18 | 5.4 | Insertar los datos correspondientes a los almacenes de la central mas las tiendas |  | 1d | 2006-06-30 A | 2006-06-30 A | 17 | 100% |  | 2006-05-19 | 2006-05-19 | 1d |  |  |  |
| 19 | 6 | **ArticuloColorAlmacen** |  | 11d? | 2006-05-10 A | 2006-05-24 A | 14 | 100% |  | 2006-05-10 | 2006-05-24 | 11d? |  |  |  |
| 20 | 6.1 | Crear clase persist ArticuloColorAlmacen |  | 1d | 2006-05-10 A | 2006-05-10 A |  | 100% |  | 2006-05-10 | 2006-05-10 | 0d |  |  |  |
| 21 | 6.2 | Crear objeto ArticuloColorAlmacen |  | 1d | 2006-05-22 A | 2006-05-22 A | 20 | 100% |  | 2006-05-22 | 2006-05-22 | 1d |  |  |  |
| 22 | 6.3 | Cargar los datos de ArticuloAlmacen desde ArticuloColor |  | 1d? | 2006-05-23 A | 2006-05-23 A | 21 | 100% |  | 2006-05-23 | 2006-05-23 | 1d? |  |  |  |
| 23 | 6.4 | Los pedidos de compra editan por defecto materiales en vez de articulos |  | 1d? | 2006-05-24 A | 2006-05-24 A | 22 | 100% |  | 2006-05-24 | 2006-05-24 | 1d? |  |  |  |
| 24 | 7 | **Terminales** |  | 3d? | 2006-06-21 A | 2006-06-23 A |  | 100% |  | 2006-05-08 | 2006-05-10 | 3d? |  |  |  |
| 25 | 7.1 | Crear clase persist Terminal |  | 1d | 2006-06-21 A | 2006-06-21 A | 26 | 100% |  | 2006-05-09 | 2006-05-09 | 1d |  |  | finish no earlier than 2006-06-21 |
| 26 | 7.2 | Crear objeto Terminal |  | 1d | 2006-06-22 A | 2006-06-22 A | 25 | 100% |  | 2006-05-08 | 2006-05-08 | 1d |  |  |  |
| 27 | 7.3 | Cargar los datos de Terminales |  | 1d? | 2006-06-23 A | 2006-06-23 A | 26, 25 | 100% |  | 2006-05-10 | 2006-05-10 | 1d? |  |  |  |

Notes:
- 4: La solución consiste en suponer que el almacen puede ser NULL

| ID | WBS | Task | Duration | Start | Finish | Predecessors | Complete | Remaining | Baseline start | Baseline finish | Baseline duration | Total slack | Free slack | Constraint | Deadline |
| --- | --- | --- | --- | --- | --- | --- | --- | --- | --- | --- | --- | --- | --- | --- | --- |
| 28 | 8 | **Albaranes** | 23d? | 2006-05-08 A | 2006-06-07 A |  | 100% |  | 2006-05-08 | 2006-05-08 | 1d? |  |  |  |  |
| 29 | 8.1 | realizar el ciclo de recepción de un albaran (similar a pedidos) | 23d? | 2006-05-08 A | 2006-06-07 A |  | 100% |  | 2006-05-08 | 2006-05-08 | 1d? |  |  |  |  |
| 30 | 9 | **Definir catálogo de artículos** | 6d | 2006-05-09 A | 2006-05-16 A | 28 | 100% |  | 2006-05-09 | 2006-05-09 | 1d? |  |  |  |  |
| 31 | 9.1 | Catálogo de artículos | 6d | 2006-05-09 A | 2006-05-16 A |  | 100% |  | 2006-05-09 | 2006-05-09 | 1d? |  |  |  |  |
| 32 | 10 | **Etiquetar albaranes** | 16d? | 2006-05-17 A | 2006-06-07 A | 30 | 100% |  | 2006-05-10 | 2006-05-10 | 1d? |  |  |  |  |
| 33 | 10.1 | Etiquetar albaranes | 16d? | 2006-05-17 A | 2006-06-07 A |  | 100% |  | 2006-05-10 | 2006-05-10 | 1d? |  |  |  |  |
| 34 | 11 | **Facturas de compra** | 1d? | 2006-06-08 | 2006-06-08 | 32 |  |  |  |  |  | 66d |  |  |  |
| 35 | 11.1 | Realizar el ciclo de facturación de un albaran de compra y facturas de compras | 1d? | 2006-06-08 | 2006-06-08 |  |  |  |  |  |  | 66d |  |  |  |
| 36 | 12 | **Traspasos entre almacenes** | 1d? | 2006-06-09 A | 2006-06-09 A | 34 | 100% |  | 2006-05-11 | 2006-05-11 | 1d? |  |  |  |  |
| 37 | 12.1 | Versión cliente pesado | 1d? | 2006-06-09 A | 2006-06-09 A |  | 100% |  | 2006-05-11 | 2006-05-11 | 1d? |  |  |  |  |
| 38 | 13 | **Consulta stock en otros almacenes** | 1d? | 2006-06-12 | 2006-06-12 | 36 |  |  | 2006-05-12 | 2006-05-12 | 1d? | 58d | 0d |  |  |
| 39 | 13.1 | Versión cliente pesado | 1d? | 2006-06-12 | 2006-06-12 |  |  |  | 2006-05-12 | 2006-05-12 | 1d? | 58d |  |  |  |
| 40 | 13.2 | Versión web | 1d? | 2006-06-12 | 2006-06-12 |  |  |  | 2006-05-12 | 2006-05-12 | 1d? | 58d |  |  |  |
| 41 | 14 | **TPV** | 3d? | 2006-06-13 A | 2006-06-15 | 38 | 67% | 1d? | 2006-05-15 | 2006-05-18 | 4d? | 56d | 27d |  |  |
| 42 | 14.1 | Versión web | 1d? | 2006-06-13 A | 2006-06-13 A |  | 100% |  | 2006-05-15 | 2006-05-15 | 1d? |  |  |  |  |
| 43 | 14.2 | Devoluciones | 1d? | 2006-06-14 A | 2006-06-14 A | 42 | 100% |  | 2006-05-17 | 2006-05-17 | 1d? |  |  |  |  |
| 44 | 14.3 | Pagos a cuenta | 1d? | 2006-06-15 | 2006-06-15 | 43 |  |  | 2006-05-18 | 2006-05-18 | 1d? | 56d |  |  |  |
| 45 | 15 | **Comunicaciones** | 3d? | 2006-05-08 A | 2006-05-10 A |  | 100% |  | 2006-05-08 | 2006-05-10 | 3d? |  |  |  |  |
| 46 | 15.1 | Decidir infraestructura | 1d? | 2006-05-08 A | 2006-05-08 A |  | 100% |  | 2006-05-08 | 2006-05-08 | 1d? |  |  |  |  |
| 47 | 15.2 | Aprobar presupuestos | 1d? | 2006-05-09 A | 2006-05-09 A | 46 | 100% |  | 2006-05-09 | 2006-05-09 | 1d? |  |  |  |  |
| 48 | 15.3 | Alta de lineas y de VPN | 1d? | 2006-05-10 A | 2006-05-10 A | 47 | 100% |  | 2006-05-10 | 2006-05-10 | 1d? |  |  |  |  |
| 49 | 16 | **Hardware** | 20d? | 2006-06-27 A | 2006-07-24 |  | 80% | 4d? | 2006-05-08 | 2006-05-08 | 1d? | -18d | 0d |  | 2006-05-30 |
| 50 | 16.1 | Decidir equipamiento | 2d? | 2006-06-27 A | 2006-06-28 A |  | 100% |  | 2006-05-08 | 2006-05-08 | 1d? |  |  | start no earlier than 2006-06-27 |  |
| 51 | 16.2 | Comprar material | 2d? | 2006-06-27 A | 2006-06-28 A | 50 | 100% |  | 2006-05-08 | 2006-05-08 | 1d? |  |  | start no earlier than 2006-06-27 |  |
| 52 | 16.3 | instalación del router central y del cable ethernet | 1d? | 2006-07-24 | 2006-07-24 |  |  |  |  |  |  | -39d | 0d | finish no earlier than 2006-07-24 |  |

| ID | WBS | Task | Duration | Start | Finish | Predecessors | Baseline start | Baseline finish | Baseline duration | Total slack | Free slack | Constraint |
| --- | --- | --- | --- | --- | --- | --- | --- | --- | --- | --- | --- | --- |
| 53 | 17 | **Pruebas** | 4d | 2006-07-25 | 2006-07-28 | 45, 49, 41 | 2006-05-19 | 2006-05-24 | 4d | 29d | 0d |  |
| 54 | 17.1 | Pruebas de teleproceso | 2d | 2006-07-25 | 2006-07-26 |  | 2006-05-19 | 2006-05-22 | 2d | 29d | 0d |  |
| 55 | 17.2 | Pruebas de impresión | 2d | 2006-07-27 | 2006-07-28 | 54 | 2006-05-23 | 2006-05-24 | 2d | 29d |  |  |
| 56 | 18 | **Arranque** | 1d? | 2006-07-31 | 2006-07-31 | 53 | 2006-05-25 | 2006-05-25 | 1d? | 29d |  |  |
| 57 | 18.1 | Arrancar y brindar con champan | 1d? | 2006-07-31 | 2006-07-31 |  | 2006-05-25 | 2006-05-25 | 1d? | 29d |  |  |
| 58 | 19 | **Mejoras** | 90d? | 2006-05-08 | 2006-09-08 |  |  |  |  | 0d |  |  |
| 59 | 19.1 | El PVP de los artículos depende del % de beneficio del proveedor, mejor hacer un formulario que el InputBox | 1d? | 2006-09-04 | 2006-09-04 |  |  |  |  | 0d |  | start no earlier than 2006-09-04 |
| 60 | 19.2 | Incluir totales en el albaran y en el picker | 1d? | 2006-09-05 | 2006-09-05 | 59 |  |  |  | 0d |  | start no earlier than 2006-09-04 |
| 61 | 19.3 | En el grid de albaranes el campo fecha debe ser más ancho | 1d? | 2006-09-06 | 2006-09-06 | 60 |  |  |  | 0d |  | start no earlier than 2006-09-04 |
| 62 | 19.4 | Artículos de talla única | 1d? | 2006-09-07 | 2006-09-07 | 61 |  |  |  | 0d |  |  |
| 63 | 19.5 | Report de informe de ventas para Juan | 1d? | 2006-09-08 | 2006-09-08 | 62 |  |  |  | 0d |  |  |
| 64 | 19.6 | Tratamiento del IVA en facturas de venta. | 1d? | 2006-05-08 | 2006-05-08 |  |  |  |  | 89d |  |  |
| 65 | 19.7 | Error al lanzar la consulta de ventas. Relacionado con que la lista de nombre-valor tiene valores del tipo "047" y "0047", y la funcion format$ lo trata mal. | 1d? | 2006-05-08 | 2006-05-08 |  |  |  |  | 89d |  |  |
| 66 | 19.8 | Devoluciones | 1d? | 2006-05-08 | 2006-05-08 |  |  |  |  | 89d |  |  |
| 67 | 19.9 | Señales | 1d? | 2006-05-08 | 2006-05-08 |  |  |  |  | 89d |  |  |
| 68 | 19.10 | automatizar el build para que pare los servicios iis | 1d? | 2006-05-08 | 2006-05-08 |  |  |  |  | 89d |  |  |
| 69 | 19.11 | quitar el acceso al string de conexión en el asp tpvidentify | 1d? | 2006-05-08 | 2006-05-08 |  |  |  |  | 89d |  |  |
| 70 | 19.12 | Revisar el sistema de consultas porque a Juan no le sirven | 1d? | 2006-05-08 | 2006-05-08 |  |  |  |  | 89d |  |  |
